How a schedule from MS Project changed from version to version. A marks actual dates.

## Version 1 (saved 2016-10-16, file Cronograma atualizado.mpp)

| ID | WBS | Task | Duration | Start | Finish | Predecessors | Complete | Total float | Constraint |
| --- | --- | --- | --- | --- | --- | --- | --- | --- | --- |
| 1 | 1 | **Projeto - Plataforma de Financiamento Coletivo da UNIFEI** | 71d | 2016-08-15 A | 2016-11-21 |  | 27% |  |  |
| 2 | 1.1 | **Prospecção** | 12d? | 2016-08-15 A | 2016-08-31 A |  | 100% |  |  |
| 3 | 1.1.1 | **PTEC - Proposta Técnica** | 12d | 2016-08-15 A | 2016-08-30 A |  | 100% |  |  |
| 4 |  | Elaborar uma Pauta para a reunião e estudar domínio de Aplicação | 0.88d | 2016-08-15 A | 2016-08-15 A |  | 100% |  |  |
| 5 |  | Reunir-se com o Cliente | 0.88d | 2016-08-16 A | 2016-08-16 A | 4 | 100% |  |  |
| 6 |  | Redigir PTEC | 3.12d | 2016-08-17 A | 2016-08-20 A | 5 | 100% |  |  |
| 7 |  | Revisar PTEC | 1.12d | 2016-08-30 A | 2016-08-30 A | 6 | 100% |  |  |
| 8 | 1.1.2 | **ETP - Estimativa de Tamanho Preliminar** | 2d | 2016-08-29 A | 2016-08-30 A | 3 | 100% |  |  |
| 9 |  | Elaborar ETP | 1d | 2016-08-29 A | 2016-08-30 A |  | 100% |  |  |
| 10 |  | Revisar ETP | 0.02d | 2016-08-30 A | 2016-08-30 A | 9 | 100% |  |  |
| 11 | 1.1.3 | **CRP e ORP - Cronograma e Orçamento Preliminares** | 6d | 2016-08-23 A | 2016-08-30 A |  | 100% |  |  |
| 12 |  | Elaborar CRP e ORP | 2d | 2016-08-23 A | 2016-08-25 A |  | 100% |  |  |
| 13 |  | Revisar CRP e ORP | 0.88d | 2016-08-30 A | 2016-08-30 A | 12 | 100% |  |  |
| 14 | 1.1.4 | **Aprovações - Prospecção** | 1.12d? | 2016-08-30 A | 2016-08-31 A |  | 100% |  |  |
| 15 |  | Aprovar PTEC | 0.12d | 2016-08-31 A | 2016-08-31 A | 7 | 100% |  |  |
| 16 |  | Aprovar ETP | 0.04d? | 2016-08-30 A | 2016-08-30 A | 10SS | 100% |  | finish no earlier than 2016-08-30 |
| 17 |  | Aprovar CRP e ORP | 1d | 2016-08-30 A | 2016-08-30 A | 13SS | 100% |  |  |
| 18 | 1.2 | **Planejamento** | 40.88d | 2016-08-15 A | 2016-10-10 A |  | 100% |  |  |
| 19 | 1.2.1 | **EAP** | 36d | 2016-08-15 A | 2016-10-03 A |  | 100% |  |  |
| 20 |  | Elaborar EAP | 10d | 2016-08-15 A | 2016-08-27 A |  | 100% |  |  |
| 21 |  | Revisar EAP | 29.12d | 2016-08-24 A | 2016-10-03 A | 20 | 100% |  |  |
| 22 | 1.2.2 | **Plano de Projeto** | 12d | 2016-08-15 A | 2016-08-30 A |  | 100% |  |  |
| 23 |  | Elaborar plano de projeto | 4d | 2016-08-15 A | 2016-08-19 A |  | 100% |  |  |
| 24 |  | Revisar plano de projeto | 1d | 2016-08-30 A | 2016-08-30 A | 23 | 100% |  |  |
| 25 | 1.2.3 | **ETD – Estimativa de Tamanho Definitiva** | 3d | 2016-08-29 A | 2016-08-31 A |  | 100% |  |  |
| 26 |  | Elaborar ETD | 1d | 2016-08-29 A | 2016-08-30 A |  | 100% |  |  |
| 27 |  | Revisar ETD | 0.06d | 2016-08-31 A | 2016-08-31 A | 26 | 100% |  |  |
| 28 | 1.2.4 | **CRD e ORD – Cronograma e Orçamento Definitivo** | 30d | 2016-08-30 A | 2016-10-10 |  | 100% |  |  |
| 29 |  | Elaborar CRD e ORD | 7d | 2016-08-30 A | 2016-09-08 A |  | 100% |  |  |
| 30 |  | Revisar CRD e ORD | 1d | 2016-10-05 A | 2016-10-06 A | 29 | 100% |  |  |
| 31 | 1.2.5 | **Aprovações - Planejamento** | 34d | 2016-08-24 A | 2016-10-10 A |  | 100% |  |  |
| 32 |  | Aprovar EAP | 29.12d | 2016-08-24 A | 2016-10-03 A | 21SS | 100% |  |  |
| 33 |  | Aprovar plano de projeto | 30.12d | 2016-08-30 A | 2016-10-10 A | 24SS | 100% |  |  |
| 34 |  | Aprovar ETD | 27.12d | 2016-09-01 A | 2016-10-10 A | 27 | 100% |  |  |
| 35 |  | Aprovar CRD e ORD | 1d | 2016-10-10 A | 2016-10-10 A | 29 | 100% |  |  |
| 36 | 1.3 | **Análise** | 29.88d | 2016-08-30 A | 2016-10-10 |  | 100% |  |  |
| 37 | 1.3.1 | **Documento de Requisitos** | 30d | 2016-08-30 A | 2016-10-10 |  | 100% |  |  |
| 38 |  | Especificar Requisitos Funcionais de Sistema | 2d | 2016-08-30 A | 2016-09-01 A |  | 100% |  |  |
| 39 |  | Elaborar DRE | 2.12d | 2016-09-06 A | 2016-09-08 A | 38 | 100% |  |  |
| 40 |  | Realizar correções no DRE | 2d | 2016-09-14 A | 2016-09-15 A | 43 | 100% |  |  |
| 41 | 1.3.2 | **Checklist de Documento de Requisitos** | 8d | 2016-09-12 A | 2016-09-21 A |  | 100% |  |  |
| 42 |  | Analisar DRE | 2d | 2016-09-12 A | 2016-09-13 A |  | 100% |  |  |
| 43 |  | Desenvolver Checklist | 1d | 2016-09-13 A | 2016-09-13 A | 42 | 100% |  |  |
| 44 |  | Aprovar DRE | 2.12d | 2016-09-20 A | 2016-09-21 A | 40 | 100% |  |  |
| 45 | 1.3.3 | **Matriz de Rastreabilidade Bidirecional** | 16d | 2016-09-19 A | 2016-10-10 |  | 100% |  |  |
| 46 |  | Analisar DRE | 1d | 2016-09-19 A | 2016-09-20 A |  | 100% |  |  |
| 47 |  | Dispor graficamente os requisitos | 1.88d | 2016-09-21 A | 2016-09-22 A | 46 | 100% |  |  |
| 48 |  | Estabelecer relações entre os requisitos | 2d | 2016-09-21 A | 2016-09-22 A | 46 | 100% |  |  |
| 49 |  | Elaborar matriz de rastreabilidade | 3d | 2016-09-21 A | 2016-09-26 A | 46 | 100% |  |  |
| 50 | 1.4 | **Modelagem UML** | 10d | 2016-09-27 A | 2016-10-10 |  | 100% |  |  |
| 51 | 1.4.1 | **DIC – Diagrama de Classes** | 6d | 2016-10-03 | 2016-10-10 |  | 100% |  |  |
| 52 |  | Elaborar diagrama de classes | 0.04d | 2016-09-27 A | 2016-09-27 A | 45 | 100% |  |  |
| 53 | 1.4.2 | **MER – Modelo Entidade Relacionamento** | 6d | 2016-10-03 | 2016-10-10 |  | 100% |  |  |
| 54 |  | Elaborar MER | 0.19d | 2016-09-27 A | 2016-09-27 A | 45 | 100% |  |  |
| 55 | 1.5 | **Release 01** | 30.88d | 2016-10-10 | 2016-11-21 |  |  | 0d |  |
| 56 | 1.5.1 | **Implementação / Teste** | 31d | 2016-10-10 | 2016-11-21 |  |  |  |  |
| 57 | 1.5.1.1 | **Implementação** | 31d | 2016-10-10 | 2016-11-21 | 44 |  |  |  |
| 58 | 1.5.1.1.1 | **Código Fonte** | 31d | 2016-10-10 | 2016-11-21 |  |  |  |  |
| 59 |  | [RFS01] Cadastrar Usuário | 11d | 2016-10-10 | 2016-10-24 |  |  |  |  |
| 60 |  | [RFS02] Consultar Usuário | 11d | 2016-10-10 | 2016-10-24 |  |  |  |  |
| 61 |  | [RFS03] Alterar Usuário | 11d | 2016-10-10 | 2016-10-24 |  |  |  |  |
| 62 |  | [RFS04] Desativar Usuário | 11d | 2016-10-10 | 2016-10-24 |  |  |  |  |
| 63 |  | [RFS05] Cadastrar Projeto Candidato | 11d | 2016-10-10 | 2016-10-24 |  |  |  |  |
| 64 |  | [RFS06] Listar Projetos Candidatos | 11d | 2016-10-10 | 2016-10-24 |  |  |  |  |
| 65 |  | [RFS07] Alterar Projetos Candidatos | 11d | 2016-10-10 | 2016-10-24 |  |  |  |  |
| 66 |  | [RFS08] Remover Projeto Candidato | 11d | 2016-10-10 | 2016-10-24 |  |  |  |  |
| 67 |  | [RFS09] Cadastrar Critério de Avaliação | 10d | 2016-10-25 | 2016-11-07 |  |  |  |  |
| 68 |  | [RFS10] Listar Critérios de Avaliação | 10d | 2016-10-25 | 2016-11-07 |  |  |  |  |
| 69 |  | [RFS11] Alterar Critérios de Avaliação | 10d | 2016-10-25 | 2016-11-07 |  |  |  |  |
| 70 |  | [RFS12] Desativar Critério de Avaliação | 10d | 2016-10-25 | 2016-11-07 |  |  |  |  |

| ID | WBS | Task | Duration | Start | Finish | Predecessors | Complete | Constraint |
| --- | --- | --- | --- | --- | --- | --- | --- | --- |
| 71 |  | [RFS13] Avaliar Projeto Candidato | 10d | 2016-10-25 | 2016-11-07 |  |  |  |
| 72 |  | [RFS14] Consultar Avaliação do Projeto Candidato | 10d | 2016-10-25 | 2016-11-07 |  |  |  |
| 73 |  | [RFS15] Alterar Avaliação do Projeto Candidato | 10d | 2016-10-25 | 2016-11-07 |  |  |  |
| 74 |  | [RFS16] Cadastrar Valor de Repasse Financeiro | 10d | 2016-10-25 | 2016-11-07 |  |  |  |
| 75 |  | [RFS17] Consultar Valor de Repasse Financeiro | 10d | 2016-10-25 | 2016-11-07 |  |  |  |
| 76 |  | [RFS18] Alterar Valor de Repasse Financeiro | 10d | 2016-10-25 | 2016-11-07 |  |  |  |
| 77 |  | [RFS19] Aprovar Projeto Candidato | 10d | 2016-10-25 | 2016-11-07 |  |  |  |
| 78 |  | [RFS20] Consultar Projeto Aprovado | 10d | 2016-10-25 | 2016-11-07 |  |  |  |
| 79 |  | [RFS21] Finalizar Projeto Aprovado | 10d | 2016-10-25 | 2016-11-07 |  |  |  |
| 80 |  | [RFS22] Cadastrar Cotas de Financiamento | 10d | 2016-10-25 | 2016-11-07 |  |  |  |
| 81 |  | [RFS23] Consultar Cotas de Financiamento | 10d | 2016-10-25 | 2016-11-07 |  |  |  |
| 82 |  | [RFS24] Inserir Edital | 10d | 2016-11-08 | 2016-11-21 |  |  |  |
| 83 |  | [RFS25] Consultar Edital | 10d | 2016-11-08 | 2016-11-21 |  |  |  |
| 84 |  | [RFS26] Retificar Edital | 10d | 2016-11-08 | 2016-11-21 |  |  |  |
| 85 |  | [RFS27] Definir Restrições para Financiamento de Projetos | 10d | 2016-11-08 | 2016-11-21 |  |  |  |
| 86 |  | [RFS28] Financiar Projeto | 10d | 2016-11-08 | 2016-11-21 |  |  |  |
| 87 |  | [RFS29] Consultar Financiamento | 10d | 2016-11-08 | 2016-11-21 |  |  |  |
| 88 |  | [RFS30] Atribuir Recompensa | 10d | 2016-11-08 | 2016-11-21 |  |  |  |
| 89 |  | [RFS31] Consultar Recompensa | 10d | 2016-11-08 | 2016-11-21 |  |  |  |
| 90 |  | [RFS32] Alterar Recompensa | 10d | 2016-11-08 | 2016-11-21 |  |  |  |
| 91 |  | [RFS33] Excluir Recompensa | 10d | 2016-11-08 | 2016-11-21 |  |  |  |
| 92 |  | [RFS34] Gerar Relatório dos Projetos por Categoria | 10d | 2016-11-08 | 2016-11-21 |  |  |  |
| 93 |  | [RFS35] Gerar Relatório de Investimentos Financeiros | 10d | 2016-11-08 | 2016-11-21 |  |  |  |
| 94 | 1.5.1.2 | **Teste** | 26d | 2016-10-17 | 2016-11-21 | 57 |  |  |
| 95 | 1.5.1.2.1 | **Casos de Teste (Selenium)** | 26d | 2016-10-17 | 2016-11-21 |  |  |  |
| 96 |  | [RFS01] Cadastrar Usuário | 3d | 2016-10-20 | 2016-10-24 |  |  |  |
| 97 |  | [RFS02] Consultar Usuário | 3d | 2016-10-20 | 2016-10-24 |  |  |  |
| 98 |  | [RFS03] Alterar Usuário | 3d | 2016-10-20 | 2016-10-24 |  |  |  |
| 99 |  | [RFS04] Desativar Usuário | 3d | 2016-10-20 | 2016-10-24 |  |  | start no earlier than 2016-10-20 |
| 100 |  | [RFS05] Cadastrar Projeto Candidato | 3d | 2016-10-20 | 2016-10-24 |  |  | start no earlier than 2016-10-20 |
| 101 |  | [RFS06] Listar Projetos Candidatos | 3d | 2016-10-20 | 2016-10-24 |  |  |  |
| 102 |  | [RFS07] Alterar Projetos Candidatos | 3d | 2016-10-20 | 2016-10-24 |  |  |  |
| 103 |  | [RFS08] Remover Projeto Candidato | 3d | 2016-10-20 | 2016-10-24 |  |  |  |
| 104 |  | [RFS09] Cadastrar Critério de Avaliação | 3d | 2016-11-03 | 2016-11-07 |  |  |  |
| 105 |  | [RFS10] Listar Critérios de Avaliação | 3d | 2016-11-03 | 2016-11-07 |  |  |  |
| 106 |  | [RFS11] Alterar Critérios de Avaliação | 3d | 2016-11-03 | 2016-11-07 |  |  |  |
| 107 |  | [RFS12] Desativar Critério de Avaliação | 3d | 2016-11-03 | 2016-11-07 |  |  | start no earlier than 2016-11-03 |
| 108 |  | [RFS13] Avaliar Projeto Candidato | 3d | 2016-11-03 | 2016-11-07 |  |  |  |
| 109 |  | [RFS14] Consultar Avaliação do Projeto Candidato | 3d | 2016-11-03 | 2016-11-07 |  |  |  |
| 110 |  | [RFS15] Alterar Avaliação do Projeto Candidato | 3d | 2016-11-03 | 2016-11-07 |  |  |  |
| 111 |  | [RFS16] Cadastrar Valor de Repasse Financeiro | 3d | 2016-11-03 | 2016-11-07 |  |  |  |
| 112 |  | [RFS17] Consultar Valor de Repasse Financeiro | 3d | 2016-11-03 | 2016-11-07 |  |  |  |
| 113 |  | [RFS18] Alterar Valor de Repasse Financeiro | 3d | 2016-11-03 | 2016-11-07 |  |  |  |
| 114 |  | [RFS19] Aprovar Projeto Candidato | 3d | 2016-11-03 | 2016-11-07 |  |  |  |
| 115 |  | [RFS20] Consultar Projeto Aprovado | 3d | 2016-11-03 | 2016-11-07 |  |  |  |
| 116 |  | [RFS21] Finalizar Projeto Aprovado | 3d | 2016-11-03 | 2016-11-07 |  |  |  |
| 117 |  | [RFS22] Cadastrar Cotas de Financiamento | 3d | 2016-11-03 | 2016-11-07 |  |  |  |
| 118 |  | [RFS23] Consultar Cotas de Financiamento | 3d | 2016-11-03 | 2016-11-07 |  |  |  |
| 119 |  | [RFS24] Inserir Edital | 3d | 2016-11-17 | 2016-11-21 |  |  |  |
| 120 |  | [RFS25] Consultar Edital | 3d | 2016-11-17 | 2016-11-21 |  |  |  |
| 121 |  | [RFS26] Retificar Edital | 3d | 2016-11-17 | 2016-11-21 |  |  |  |
| 122 |  | [RFS27] Definir Restrições para Financiamento de Projetos | 3d | 2016-11-17 | 2016-11-21 |  |  |  |
| 123 |  | [RFS28] Financiar Projeto | 3d | 2016-11-17 | 2016-11-21 |  |  |  |
| 124 |  | [RFS29] Consultar Financiamento | 3d | 2016-11-17 | 2016-11-21 |  |  |  |
| 125 |  | [RFS30] Atribuir Recompensa | 3d | 2016-11-17 | 2016-11-21 |  |  |  |
| 126 |  | [RFS31] Consultar Recompensa | 3d | 2016-11-17 | 2016-11-21 |  |  |  |
| 127 |  | [RFS32] Alterar Recompensa | 3d | 2016-11-17 | 2016-11-21 |  |  |  |
| 128 |  | [RFS33] Excluir Recompensa | 3d | 2016-11-17 | 2016-11-21 |  |  |  |
| 129 |  | [RFS34] Gerar Relatório dos Projetos por Categoria | 3d | 2016-11-17 | 2016-11-21 |  |  |  |
| 130 |  | [RFS35] Gerar Relatório de Investimentos Financeiros | 3d | 2016-11-17 | 2016-11-21 |  |  |  |
| 131 | 1.6 | **Implantação** | 15d | 2016-11-01 | 2016-11-21 |  |  |  |
| 132 | 1.6.1 | **PIM - Plano de Implantação** | 14d | 2016-11-01 | 2016-11-18 |  |  |  |
| 133 |  | Elaborar PIM | 4d | 2016-11-01 | 2016-11-05 |  |  |  |
| 134 |  | Revisar PIM | 1d | 2016-11-16 | 2016-11-17 | 133 |  |  |
| 135 |  | Aprovar PIM | 1d | 2016-11-18 | 2016-11-18 | 134 |  |  |
| 136 | 1.7 | **Fechamento** | 0d | 2016-11-21 | 2016-11-21 |  |  |  |
| 137 | 1.7.1 | **DLA – Documento de Lições Aprendidas** | 1d | 2016-11-29 | 2016-11-29 |  |  |  |
| 138 |  | Elaborar DLA | 0.88d | 2016-11-29 | 2016-11-29 |  |  |  |
| 140 | 1.8 | **Monitoramento e Controle** | 71d | 2016-08-15 A | 2016-11-21 |  | 20% |  |
| 141 | 1.8.1 | **PPR – Plano de Projetos** | 78d | 2016-08-15 A | 2016-11-30 |  | 18% |  |

| ID | WBS | Task | Duration | Start | Finish | Predecessors | Complete | Total float |
| --- | --- | --- | --- | --- | --- | --- | --- | --- |
| 142 |  | Elaborar PPR | 1.91d | 2016-08-15 A | 2016-08-17 |  | 19% |  |
| 143 |  | Revisar PPR | 0.04d | 2016-11-30 | 2016-11-30 | 142 |  |  |
| 144 | 1.8.2 | **SRR – Status Report da Release** | 77d | 2016-08-15 A | 2016-11-29 |  | 100% |  |
| 145 |  | Elaborar SRR | 0.04d | 2016-08-15 A | 2016-08-15 A |  | 100% |  |
| 146 | 1.9 | **Gerência de Configuração** | 71d | 2016-08-15 A | 2016-11-21 |  | 20% |  |
| 147 | 1.9.1 | **PGC – Plano de Gerência de Configuração** | 0.12d | 2016-08-15 A | 2016-08-15 |  | 20% | 0d |
| 148 |  | Elaborar PGC | 0.12d | 2016-08-15 A | 2016-08-15 |  | 20% |  |
| 149 | 1.10 | **Controle de Mudanças** | 71d | 2016-08-15 A | 2016-11-21 |  | 20% |  |
| 150 | 1.10.1 | **RSL – Registro de Solicitação de Mudanças** | 77d | 2016-08-15 A | 2016-11-29 |  | 20% |  |
| 151 |  | Registrar mudanças | 0.98d | 2016-08-15 A | 2016-08-16 |  | 20% |  |

## Version 2 (saved 2016-10-24, file Cronograma_V4.mpp)

Last finish 2016-11-30 → 2016-11-29 (-1d). Complete tasks 36 → 54.

Added:

| ID | Task | Duration | Start | Finish | Predecessors |
| --- | --- | --- | --- | --- | --- |
| 77 | **Release 02** | 5d | 2016-10-25 | 2016-10-31 |  |
| 78 | **Implementação / Teste** | 5d | 2016-10-25 | 2016-10-31 |  |
| 79 | **Implementação** | 5d | 2016-10-25 | 2016-10-31 | 44 |
| 80 | **Código Fonte** | 5d | 2016-10-25 | 2016-10-31 |  |
| 91 | **Teste** | 5d | 2016-10-25 | 2016-10-31 | 79 |
| 92 | **Casos de Teste (Selenium)** | 5d | 2016-10-25 | 2016-10-31 |  |
| 103 | **Release 03** | 4.88d | 2016-11-01 | 2016-11-07 |  |
| 104 | **Implementação / Teste** | 5d | 2016-11-01 | 2016-11-07 |  |
| 105 | **Implementação** | 5d | 2016-11-01 | 2016-11-07 | 44 |
| 106 | **Código Fonte** | 5d | 2016-11-01 | 2016-11-07 |  |
| 115 | **Teste** | 5d | 2016-11-01 | 2016-11-07 | 105 |
| 116 | **Casos de Teste (Selenium)** | 5d | 2016-11-01 | 2016-11-07 |  |
| 125 | **Release 04** | 10d | 2016-11-08 | 2016-11-21 |  |
| 126 | **Implementação / Teste** | 10d | 2016-11-08 | 2016-11-21 |  |
| 127 | **Implementação** | 10d | 2016-11-08 | 2016-11-21 | 44 |
| 128 | **Código Fonte** | 10d | 2016-11-08 | 2016-11-21 |  |
| 138 | **Teste** | 10d | 2016-11-08 | 2016-11-21 | 127 |
| 139 | **Casos de Teste (Selenium)** | 10d | 2016-11-08 | 2016-11-21 |  |

Changed:

| ID | Task | Start | Finish | Duration | Complete | Total float | Other |
| --- | --- | --- | --- | --- | --- | --- | --- |
| 1 | **Projeto - Plataforma de Financiamento Coletivo da UNIFEI** | 2016-08-15 A → 2016-08-15 |  |  | 27% → 38% |  |  |
| 55 | **Release 01** | 2016-10-10 A | 2016-11-21 → 2016-10-24 A (-28d) | 30.88d → 11d | 0% → 100% | 0d → none |  |
| 56 | **Implementação / Teste** | 2016-10-10 A | 2016-11-21 → 2016-10-24 A (-28d) | 31d → 11d | 0% → 100% |  |  |
| 57 | **Implementação** | 2016-10-10 A | 2016-11-21 → 2016-10-24 A (-28d) | 31d → 11d | 0% → 100% |  |  |
| 58 | **Código Fonte** | 2016-10-10 A | 2016-11-21 → 2016-10-24 A (-28d) | 31d → 11d | 0% → 100% |  |  |
| 59 | [RFS01] Cadastrar Usuário | 2016-10-10 A | 2016-10-24 A |  | 0% → 100% |  |  |
| 60 | [RFS02] Consultar Usuário | 2016-10-10 A | 2016-10-24 A |  | 0% → 100% |  | resources Luana → Luana; Karen |
| 61 | [RFS03] Alterar Usuário | 2016-10-10 A | 2016-10-24 A |  | 0% → 100% |  | resources Regiane → Regiane; Karen |
| 62 | [RFS04] Desativar Usuário | 2016-10-10 A | 2016-10-24 A |  | 0% → 100% |  | resources Pedro → Pedro; Karen |
| 63 | [RFS05] Cadastrar Projeto Candidato | 2016-10-10 A | 2016-10-24 A |  | 0% → 100% |  | resources Luana → Luana; Vinícius |
| 64 | [RFS06] Listar Projetos Candidatos | 2016-10-10 A | 2016-10-24 A |  | 0% → 100% |  | resources Regiane → Regiane; Vinícius |
| 65 | [RFS07] Alterar Projetos Candidatos | 2016-10-10 A | 2016-10-24 A |  | 0% → 100% |  | resources Karen → Karen; Vinícius |
| 66 | [RFS08] Remover Projeto Candidato | 2016-10-10 A | 2016-10-24 → 2016-10-10 A (-14d) | 11d → 0.45d | 0% → 100% |  | resources Vinícius → Vinícius; Karen |
| 67 | **Teste** |  | 2016-11-21 → 2016-10-24 A (-28d) | 26d → 6d | 0% → 100% |  |  |
| 68 | **Casos de Teste (Selenium)** |  | 2016-11-21 → 2016-10-24 A (-28d) | 26d → 6d | 0% → 100% |  |  |
| 69 | [RFS01] Cadastrar Usuário | 2016-10-20 A | 2016-10-24 A |  | 0% → 100% |  | resources Vinícius → Vinícius; Pedro |
| 70 | [RFS02] Consultar Usuário | 2016-10-20 A | 2016-10-24 A |  | 0% → 100% |  | resources Vinícius → Vinícius; Pedro |
| 71 | [RFS03] Alterar Usuário | 2016-10-20 A | 2016-10-24 A |  | 0% → 100% |  | resources Regiane → Regiane; Pedro |
| 72 | [RFS04] Desativar Usuário | 2016-10-20 A | 2016-10-24 A |  | 0% → 100% |  | resources Luana → Luana; Pedro |
| 73 | [RFS05] Cadastrar Projeto Candidato | 2016-10-20 A | 2016-10-24 A |  | 0% → 100% |  | resources Karen → Karen; Pedro |
| 74 | [RFS06] Listar Projetos Candidatos | 2016-10-20 A | 2016-10-24 A |  | 0% → 100% |  | resources Luana → Luana; Pedro |
| 75 | [RFS07] Alterar Projetos Candidatos | 2016-10-20 A | 2016-10-24 A |  | 0% → 100% |  | resources Regiane → Regiane; Pedro |
| 76 | [RFS08] Remover Projeto Candidato | 2016-10-20 A | 2016-10-24 A |  | 0% → 100% |  | resources Karen → Karen; Pedro |
| 81 | [RFS09] Cadastrar Critério de Avaliação |  | 2016-11-07 → 2016-10-31 (-7d) | 10d → 5d |  |  | resources none → Karen |
| 82 | [RFS10] Listar Critérios de Avaliação |  | 2016-11-07 → 2016-10-31 (-7d) | 10d → 5d |  |  | resources none → Luana |
| 83 | [RFS11] Alterar Critérios de Avaliação |  | 2016-11-07 → 2016-10-31 (-7d) | 10d → 5d |  |  | resources none → Regiane |
| 84 | [RFS12] Desativar Critério de Avaliação |  | 2016-11-07 → 2016-10-31 (-7d) | 10d → 5d |  |  | resources none → Pedro |
| 85 | [RFS13] Avaliar Projeto Candidato |  | 2016-11-07 → 2016-10-31 (-7d) | 10d → 5d |  |  | resources none → Luana |
| 86 | [RFS14] Consultar Avaliação do Projeto Candidato |  | 2016-11-07 → 2016-10-31 (-7d) | 10d → 5d |  |  | resources none → Regiane |
| 87 | [RFS15] Alterar Avaliação do Projeto Candidato |  | 2016-11-07 → 2016-10-31 (-7d) | 10d → 5d |  |  | resources none → Karen |
| 88 | [RFS16] Cadastrar Valor de Repasse Financeiro |  | 2016-11-07 → 2016-10-31 (-7d) | 10d → 5d |  |  | resources none → Vinícius |
| 89 | [RFS17] Consultar Valor de Repasse Financeiro |  | 2016-11-07 → 2016-10-31 (-7d) | 10d → 5d |  |  | resources none → Karen |
| 90 | [RFS18] Alterar Valor de Repasse Financeiro |  | 2016-11-07 → 2016-10-31 (-7d) | 10d → 5d |  |  | resources none → Luana |
| 93 | [RFS09] Cadastrar Critério de Avaliação | 2016-11-03 → 2016-10-25 (-9d) | 2016-11-07 → 2016-10-31 (-7d) | 3d → 5d |  |  | resources none → Pedro |
| 94 | [RFS10] Listar Critérios de Avaliação | 2016-11-03 → 2016-10-25 (-9d) | 2016-11-07 → 2016-10-31 (-7d) | 3d → 5d |  |  | resources none → Pedro |
| 95 | [RFS11] Alterar Critérios de Avaliação | 2016-11-03 → 2016-10-25 (-9d) | 2016-11-07 → 2016-10-31 (-7d) | 3d → 5d |  |  | resources none → Vinícius |
| 96 | [RFS12] Desativar Critério de Avaliação | 2016-11-03 → 2016-10-25 (-9d) | 2016-11-07 → 2016-10-31 (-7d) | 3d → 5d |  |  | constraint start no earlier than 2016-11-03 → start no earlier than 2016-10-25; resources none → Vinícius |
| 97 | [RFS13] Avaliar Projeto Candidato | 2016-11-03 → 2016-10-25 (-9d) | 2016-11-07 → 2016-10-31 (-7d) | 3d → 5d |  |  | resources none → Regiane |
| 98 | [RFS14] Consultar Avaliação do Projeto Candidato | 2016-11-03 → 2016-10-25 (-9d) | 2016-11-07 → 2016-10-31 (-7d) | 3d → 5d |  |  | resources none → Luana |
| 99 | [RFS15] Alterar Avaliação do Projeto Candidato | 2016-11-03 → 2016-10-25 (-9d) | 2016-11-07 → 2016-10-31 (-7d) | 3d → 5d |  |  | resources none → Karen |
| 100 | [RFS16] Cadastrar Valor de Repasse Financeiro | 2016-11-03 → 2016-10-25 (-9d) | 2016-11-07 → 2016-10-31 (-7d) | 3d → 5d |  |  | resources none → Luana |
| 101 | [RFS17] Consultar Valor de Repasse Financeiro | 2016-11-03 → 2016-10-25 (-9d) | 2016-11-07 → 2016-10-31 (-7d) | 3d → 5d |  |  | resources none → Regiane |
| 102 | [RFS18] Alterar Valor de Repasse Financeiro | 2016-11-03 → 2016-10-25 (-9d) | 2016-11-07 → 2016-10-31 (-7d) | 3d → 5d |  |  | resources none → Karen |
| 107 | [RFS19] Aprovar Projeto Candidato | 2016-10-25 → 2016-11-01 (+7d) |  | 10d → 5d |  |  | resources none → Regiane |
| 108 | [RFS20] Consultar Projeto Aprovado | 2016-10-25 → 2016-11-01 (+7d) |  | 10d → 5d |  |  | resources none → Pedro |
| 109 | [RFS21] Finalizar Projeto Aprovado | 2016-10-25 → 2016-11-01 (+7d) |  | 10d → 5d |  |  | resources none → Luana |
| 110 | [RFS22] Cadastrar Cotas de Financiamento | 2016-10-25 → 2016-11-01 (+7d) |  | 10d → 5d |  |  | resources none → Regiane |
| 111 | [RFS23] Consultar Cotas de Financiamento | 2016-10-25 → 2016-11-01 (+7d) |  | 10d → 5d |  |  | resources none → Karen |
| 112 | [RFS24] Inserir Edital | 2016-11-08 → 2016-11-01 (-7d) | 2016-11-21 → 2016-11-07 (-14d) | 10d → 5d |  |  | resources none → Vinícius |
| 113 | [RFS25] Consultar Edital | 2016-11-08 → 2016-11-01 (-7d) | 2016-11-21 → 2016-11-07 (-14d) | 10d → 5d |  |  | resources none → Karen |
| 114 | [RFS26] Retificar Edital | 2016-11-08 → 2016-11-01 (-7d) | 2016-11-21 → 2016-11-07 (-14d) | 10d → 5d |  |  | resources none → Luana |
| 117 | [RFS19] Aprovar Projeto Candidato | 2016-11-03 → 2016-11-01 (-2d) |  | 3d → 5d |  |  | resources none → Pedro |
| 118 | [RFS20] Consultar Projeto Aprovado | 2016-11-03 → 2016-11-01 (-2d) |  | 3d → 5d |  |  | resources none → Pedro |
| 119 | [RFS21] Finalizar Projeto Aprovado | 2016-11-03 → 2016-11-01 (-2d) |  | 3d → 5d |  |  | resources none → Vinícius |
| 120 | [RFS22] Cadastrar Cotas de Financiamento | 2016-11-03 → 2016-11-01 (-2d) |  | 3d → 5d |  |  | resources none → Vinícius |
| 121 | [RFS23] Consultar Cotas de Financiamento | 2016-11-03 → 2016-11-01 (-2d) |  | 3d → 5d |  |  | resources none → Regiane |
| 122 | [RFS24] Inserir Edital | 2016-11-17 → 2016-11-01 (-16d) | 2016-11-21 → 2016-11-07 (-14d) | 3d → 5d |  |  | resources none → Luana |
| 123 | [RFS25] Consultar Edital | 2016-11-17 → 2016-11-01 (-16d) | 2016-11-21 → 2016-11-07 (-14d) | 3d → 5d |  |  | resources none → Karen |
| 124 | [RFS26] Retificar Edital | 2016-11-17 → 2016-11-01 (-16d) | 2016-11-21 → 2016-11-07 (-14d) | 3d → 5d |  |  | resources none → Luana |
| 129 | [RFS27] Definir Restrições para Financiamento de Projetos |  |  |  |  |  | resources none → Regiane |
| 130 | [RFS28] Financiar Projeto |  |  |  |  |  | resources none → Pedro |
| 131 | [RFS29] Consultar Financiamento |  |  |  |  |  | resources none → Luana |
| 132 | [RFS30] Atribuir Recompensa |  |  |  |  |  | resources none → Regiane |
| 133 | [RFS31] Consultar Recompensa |  |  |  |  |  | resources none → Karen |
| 134 | [RFS32] Alterar Recompensa |  |  |  |  |  | resources none → Vinícius |
| 135 | [RFS33] Excluir Recompensa |  |  |  |  |  | resources none → Karen |
| 136 | [RFS34] Gerar Relatório dos Projetos por Categoria |  |  |  |  |  | resources none → Luana |
| 137 | [RFS35] Gerar Relatório de Investimentos Financeiros |  |  |  |  |  | resources none → Regiane |
| 140 | [RFS27] Definir Restrições para Financiamento de Projetos | 2016-11-17 → 2016-11-08 (-9d) |  | 3d → 10d |  |  | resources none → Regiane |
| 141 | [RFS28] Financiar Projeto | 2016-11-17 → 2016-11-08 (-9d) |  | 3d → 10d |  |  | resources none → Karen |

| ID | Task | Start | Finish | Duration | Complete | Other |
| --- | --- | --- | --- | --- | --- | --- |
| 142 | [RFS29] Consultar Financiamento | 2016-11-17 → 2016-11-08 (-9d) |  | 3d → 10d |  | resources none → Pedro |
| 143 | [RFS30] Atribuir Recompensa | 2016-11-17 → 2016-11-08 (-9d) |  | 3d → 10d |  | resources none → Pedro |
| 144 | [RFS31] Consultar Recompensa | 2016-11-17 → 2016-11-08 (-9d) |  | 3d → 10d |  | resources none → Karen |
| 145 | [RFS32] Alterar Recompensa | 2016-11-17 → 2016-11-08 (-9d) |  | 3d → 10d |  | resources none → Pedro |
| 146 | [RFS33] Excluir Recompensa | 2016-11-17 → 2016-11-08 (-9d) |  | 3d → 10d |  | resources none → Regiane |
| 147 | [RFS34] Gerar Relatório dos Projetos por Categoria | 2016-11-17 → 2016-11-08 (-9d) |  | 3d → 10d |  | resources none → Luana |
| 148 | [RFS35] Gerar Relatório de Investimentos Financeiros | 2016-11-17 → 2016-11-08 (-9d) |  | 3d → 10d |  | resources none → Luana |
| 158 | **Monitoramento e Controle** |  | 2016-11-21 A |  | 20% → 100% |  |
| 159 | **PPR – Plano de Projetos** |  | 2016-11-30 → 2016-11-04 (-26d) | 78d → 60d | 18% → 100% |  |
| 160 | Elaborar PPR |  | 2016-08-17 A |  | 19% → 100% | resources Pedro; Vinícius → Pedro; Vinícius; Karen; Luana |
| 161 | Revisar PPR | 2016-11-30 → 2016-11-03 A (-27d) | 2016-11-30 → 2016-11-03 A (-27d) |  | 0% → 100% |  |
| 162 | **SRR – Status Report da Release** |  | 2016-11-29 → 2016-11-21 A (-8d) | 77d → 71d |  |  |
| 163 | Elaborar SRR |  | 2016-08-15 A → 2016-11-21 A (+98d) | 0.04d → 0.5d |  | resources Karen → Pedro |
| 168 | **RSL – Registro de Solicitação de Mudanças** |  | 2016-11-29 → 2016-11-21 (-8d) | 77d → 71d |  |  |

## Version 3 (saved 2016-11-01, file Cronograma_V7.mpp)

Last finish 2016-11-29 → 2016-11-21 (-8d). Complete tasks 54 → 68.

Added:

| ID | Task | Duration | Start | Finish | Resources |
| --- | --- | --- | --- | --- | --- |
| 78 | Mudança na implementação dos requisitos de Projeto Candidato | 5d | 2016-10-25 A | 2016-10-31 | Vinícius |

Changed:

| ID | Task | Start | Finish | Duration | Complete | Other |
| --- | --- | --- | --- | --- | --- | --- |
| 1 | **Projeto - Plataforma de Financiamento Coletivo da UNIFEI** |  |  |  | 38% → 49% |  |
| 6 | Redigir PTEC |  |  | 3.12d → 3.14d |  |  |
| 7 | Revisar PTEC |  |  | 1.12d → 1.07d |  |  |
| 9 | Elaborar ETP |  |  | 1d → 1.57d |  |  |
| 23 | Elaborar plano de projeto |  |  | 4d → 4.06d |  |  |
| 26 | Elaborar ETD |  |  | 1d → 1.02d |  |  |
| 39 | Elaborar DRE |  |  | 2.12d → 2.13d |  |  |
| 40 | Realizar correções no DRE |  |  | 2d → 2.04d |  |  |
| 54 | Elaborar MER |  |  | 0.19d → 0.25d |  |  |
| 59 | [RFS01] Cadastrar Usuário |  | 2016-10-24 A → 2016-10-22 A (-2d) | 11d → 9.96d |  |  |
| 60 | [RFS02] Consultar Usuário |  |  | 11d → 11.05d |  |  |
| 61 | [RFS03] Alterar Usuário |  | 2016-10-24 A → 2016-10-21 A (-3d) | 11d → 10.02d |  |  |
| 62 | [RFS04] Desativar Usuário |  | 2016-10-24 A → 2016-10-14 A (-10d) | 11d → 3.95d |  |  |
| 63 | [RFS05] Cadastrar Projeto Candidato |  |  | 11d → 11.05d |  |  |
| 64 | [RFS06] Listar Projetos Candidatos |  | 2016-10-24 A → 2016-10-22 A (-2d) | 11d → 10.74d |  |  |
| 65 | [RFS07] Alterar Projetos Candidatos |  |  | 11d → 11.05d |  |  |
| 66 | [RFS08] Remover Projeto Candidato |  |  | 0.45d → 0.19d |  |  |
| 69 | [RFS01] Cadastrar Usuário |  | 2016-10-24 A → 2016-10-23 A (-1d) | 3d → 2.97d |  |  |
| 70 | [RFS02] Consultar Usuário |  | 2016-10-24 A → 2016-10-23 A (-1d) | 3d → 2.97d |  |  |
| 71 | [RFS03] Alterar Usuário | 2016-10-20 A → 2016-10-21 A (+1d) |  | 3d → 0.06d |  | constraint none → finish no earlier than 2016-10-24; resources Regiane; Pedro → Regiane |
| 72 | [RFS04] Desativar Usuário |  | 2016-10-24 A → 2016-10-23 A (-1d) | 3d → 2.97d |  |  |
| 73 | [RFS05] Cadastrar Projeto Candidato |  | 2016-10-24 A → 2016-10-23 A (-1d) | 3d → 2.97d |  |  |
| 74 | [RFS06] Listar Projetos Candidatos |  | 2016-10-24 A → 2016-10-23 A (-1d) | 3d → 2.97d |  |  |
| 75 | [RFS07] Alterar Projetos Candidatos |  | 2016-10-24 A → 2016-10-23 A (-1d) | 3d → 2.97d |  |  |
| 76 | [RFS08] Remover Projeto Candidato |  |  | 3d → 13.12d |  | constraint none → finish no earlier than 2016-10-24 |
| 77 | **Release 02** | 2016-10-25 A |  |  | 0% → 98% |  |
| 79 | **Implementação / Teste** | 2016-10-25 A | 2016-10-31 A |  | 0% → 100% |  |
| 80 | **Implementação** | 2016-10-25 A | 2016-10-31 A |  | 0% → 100% |  |
| 81 | **Código Fonte** | 2016-10-25 A | 2016-10-31 A |  | 0% → 100% |  |
| 82 | [RFS09] Cadastrar Critério de Avaliação | 2016-10-25 A | 2016-10-31 A | 5d → 0.5d | 0% → 100% | constraint none → finish no earlier than 2016-10-31; resources Karen → Regiane |
| 83 | [RFS10] Listar Critérios de Avaliação | 2016-10-25 A | 2016-10-31 A | 5d → 0.45d | 0% → 100% | constraint none → finish no earlier than 2016-10-31; resources Luana → Regiane |
| 84 | [RFS11] Alterar Critérios de Avaliação | 2016-10-25 A | 2016-10-31 A | 5d → 5.05d | 0% → 100% |  |
| 85 | [RFS12] Desativar Critério de Avaliação | 2016-10-25 A | 2016-10-31 A | 5d → 19.12d | 0% → 100% | constraint none → finish no earlier than 2016-10-31; resources Pedro → Regiane |
| 86 | [RFS13] Avaliar Projeto Candidato | 2016-10-25 A | 2016-10-31 A |  | 0% → 100% | resources Luana → Vinícius |
| 87 | [RFS14] Consultar Avaliação do Projeto Candidato | 2016-10-25 A | 2016-10-31 A | 5d → 0.5d | 0% → 100% | resources Regiane → Vinícius |
| 88 | [RFS15] Alterar Avaliação do Projeto Candidato | 2016-10-25 A | 2016-10-31 A | 5d → 3.88d | 0% → 100% | resources Karen → Vinícius |
| 89 | **Teste** | 2016-10-25 A | 2016-10-31 A |  | 0% → 100% |  |
| 90 | **Casos de Teste (Selenium)** | 2016-10-25 A | 2016-10-31 A |  | 0% → 100% |  |
| 91 | [RFS09] Cadastrar Critério de Avaliação | 2016-10-25 A | 2016-10-31 A | 5d → 12.1d | 0% → 100% | constraint none → finish no earlier than 2016-10-31 |
| 92 | [RFS10] Listar Critérios de Avaliação | 2016-10-25 A | 2016-10-31 A |  | 0% → 100% |  |
| 93 | [RFS11] Alterar Critérios de Avaliação | 2016-10-25 A | 2016-10-31 A |  | 0% → 100% |  |
| 94 | [RFS12] Desativar Critério de Avaliação | 2016-10-25 A | 2016-10-31 A |  | 0% → 100% |  |
| 95 | [RFS13] Avaliar Projeto Candidato | 2016-10-25 A | 2016-10-31 A |  | 0% → 100% |  |
| 96 | [RFS14] Consultar Avaliação do Projeto Candidato | 2016-10-25 A | 2016-10-31 A |  | 0% → 100% |  |
| 97 | [RFS15] Alterar Avaliação do Projeto Candidato | 2016-10-25 A | 2016-10-31 A |  | 0% → 100% |  |
| 98 | **Release 03** | 2016-11-01 → 2016-10-25 A (-7d) |  | 4.88d → 9.88d |  |  |
| 102 | [RFS18] Alterar Valor de Repasse Financeiro | 2016-10-25 A |  |  |  |  |
| 103 | [RFS17] Consultar Valor de Repasse Financeiro | 2016-10-25 A |  |  |  |  |
| 104 | [RFS16] Cadastrar Valor de Repasse Financeiro | 2016-10-25 A |  |  |  |  |
| 115 | [RFS16] Cadastrar Valor de Repasse Financeiro | 2016-10-25 A |  |  |  |  |
| 116 | [RFS17] Consultar Valor de Repasse Financeiro | 2016-10-25 A |  |  |  |  |
| 117 | [RFS18] Alterar Valor de Repasse Financeiro | 2016-10-25 A |  |  |  |  |
| 154 | Aprovar PIM |  |  | 1d → 0.88d |  |  |
| 156 | **DLA – Documento de Lições Aprendidas** | 2016-11-29 → 2016-11-21 (-8d) | 2016-11-29 → 2016-11-21 (-8d) | 1d → 0d |  |  |
| 157 | Elaborar DLA | 2016-11-29 → 2016-11-21 (-8d) | 2016-11-29 → 2016-11-21 (-8d) | 0.88d → 0.37d |  |  |
| 159 | **Monitoramento e Controle** |  | 2016-11-21 A → 2016-11-21 |  |  |  |
| 163 | **SRR – Status Report da Release** |  | 2016-11-21 A → 2016-11-21 |  |  |  |
| 164 | Elaborar SRR |  | 2016-11-21 A → 2016-08-15 A (-98d) |  |  |  |
| 165 | **Gerência de Configuração** |  |  |  | 20% → 40% |  |
| 166 | **PGC – Plano de Gerência de Configuração** |  |  |  | 20% → 40% |  |
| 167 | Elaborar PGC |  |  |  | 20% → 40% |  |
| 168 | **Controle de Mudanças** |  |  |  | 20% → 50% |  |
| 169 | **RSL – Registro de Solicitação de Mudanças** |  |  |  | 20% → 50% |  |
| 170 | Registrar mudanças |  | 2016-08-16 → 2016-11-21 (+97d) | 0.98d → 71d | 20% → 50% |  |
